# myReceita - Project

How a schedule from MS Project changed from version to version. A marks actual dates.

## Version 1 (saved 2021-04-16)

| ID | WBS | Task | Duration | Start | Finish | Predecessors | Complete | Total float | Constraint |
| --- | --- | --- | --- | --- | --- | --- | --- | --- | --- |
| 1 | 1 | **myReceita** | 75.62d? | 2021-04-01 A | 2021-07-15 |  | 7% | 0d |  |
| 2 | 1.1 | **Candidatura** | 7d | 2021-04-01 A | 2021-04-09 |  | 89% | 67.62d |  |
| 3 |  | Preparação de Candidatura | 1d | 2021-04-01 | 2021-04-01 |  |  | 73.62d |  |
| 4 |  | Entrega de documentação | 3d | 2021-04-02 A | 2021-04-06 A | 3 | 100% |  | finish no later than 2021-04-09 |
| 5 |  | Aprovação de Projeto | 5d | 2021-04-05 A | 2021-04-09 A | 4 | 100% |  | finish no later than 2021-04-16 |
| 6 | 1.2 | **Project** | 4.62d | 2021-04-12 | 2021-04-16 |  |  | 0d |  |
| 7 |  | Levantamento de requisitos | 2d | 2021-04-12 | 2021-04-13 | 5 |  | 0d |  |
| 8 |  | Analise de Tarefas | 1d | 2021-04-14 | 2021-04-14 | 7 |  | 0d |  |
| 9 |  | Planeamento | 1d | 2021-04-15 | 2021-04-15 | 8 |  | 0d |  |
| 10 |  | Elaboração de project | 4h | 2021-04-16 | 2021-04-16 | 9 |  | 0d |  |
| 11 |  | Entrega de project | 1h | 2021-04-16 | 2021-04-16 | 10 |  | 0d | finish no later than 2021-04-19 |
| 12 | 1.3 | **Desenvolvimento** | 56.25d | 2021-04-16 | 2021-07-05 |  |  | 0d |  |
| 13 | 1.3.1 | **Prototipagem** | 10.25d | 2021-04-16 | 2021-04-30 |  |  | 0d |  |
| 14 |  | Aplicação | 5d | 2021-04-16 | 2021-04-23 | 11 |  | 5d |  |
| 15 |  | Website | 5d | 2021-04-23 | 2021-04-30 | 11 |  | 0d |  |
| 16 |  | Selecção e plataformas e software | 2h | 2021-04-30 | 2021-04-30 | 14, 15 |  | 0d | finish no later than 2021-04-30 |
| 17 | 1.3.2 | **Base de dados** | 8d | 2021-05-04 | 2021-05-14 |  |  | 27d |  |
| 18 |  | Recolha de requisitos | 1d | 2021-05-04 | 2021-05-05 | 13 |  | 27d |  |
| 19 |  | Elaboração de diagramas | 3d | 2021-05-05 | 2021-05-10 | 18 |  | 27d |  |
| 20 |  | Planeamento de implementação | 1d | 2021-05-10 | 2021-05-11 | 19 |  | 27d |  |
| 21 |  | Construção | 3d | 2021-05-11 | 2021-05-14 | 20 |  | 27d |  |
| 22 | 1.3.3 | **Aplicação** | 37d | 2021-04-30 | 2021-06-22 |  |  | 0d |  |
| 23 |  | Analise de prototipo | 1d | 2021-04-30 | 2021-05-03 | 13 |  | 0d |  |
| 24 |  | Construção | 30d | 2021-05-11 | 2021-06-22 | 23 |  | 0d |  |
| 25 | 1.3.4 | **Website** | 36d | 2021-05-03 | 2021-06-22 |  |  | 0d |  |
| 26 |  | Analise de prototipo | 1d | 2021-05-03 | 2021-05-04 | 13 |  | 0d |  |
| 27 |  | Construção | 30d | 2021-05-11 | 2021-06-22 | 26 |  | 0d |  |
| 28 | 1.3.5 | **Testes** | 9d | 2021-06-22 | 2021-07-05 |  |  | 0d |  |
| 29 |  | 1ª fase | 2d | 2021-06-22 | 2021-06-24 | 17, 22, 25 |  | 0d |  |
| 30 |  | Patching | 5d | 2021-06-24 | 2021-07-01 | 29 |  | 0d |  |
| 31 |  | 2ª fase | 2d | 2021-07-01 | 2021-07-05 | 30 |  | 0d |  |
| 32 | 1.4 | **Relatório** | 6.75d | 2021-07-05 | 2021-07-14 |  |  | 0d |  |
| 33 |  | Analise de modelo | 2h | 2021-07-05 | 2021-07-06 | 13, 17, 22, 25, 28 |  | 0d |  |
| 34 |  | Planeamento | 2h | 2021-07-06 | 2021-07-06 | 33 |  | 0d |  |
| 35 |  | Elaboração | 5d | 2021-07-06 | 2021-07-13 | 34 |  | 0d |  |
| 36 |  | 1ª leitura | 4h | 2021-07-13 | 2021-07-13 | 35 |  | 0d |  |
| 37 |  | Correções | 2h | 2021-07-13 | 2021-07-14 | 36 |  | 0d |  |
| 38 |  | 2ª leitura | 4h | 2021-07-14 | 2021-07-14 | 37 |  | 0d |  |
| 39 |  | Entrega | 1d | 2021-07-14 | 2021-07-15 | 2, 6, 12, 17, 22, 25, 28, 32 |  | 0d | finish no later than 2021-07-15 |

## Version 2 (saved 2021-06-10)

Last finish stays 2021-07-15. Complete tasks 2 → 19.

Changed:

| ID | Task | Start | Finish | Complete | Total float |
| --- | --- | --- | --- | --- | --- |
| 1 | **myReceita** |  |  | 7% → 71% |  |
| 2 | **Candidatura** |  | 2021-04-09 A | 89% → 100% | 67.62d → none |
| 3 | Preparação de Candidatura | 2021-04-01 A | 2021-04-01 A | 0% → 100% | 73.62d → none |
| 6 | **Project** | 2021-04-12 A | 2021-04-16 A | 0% → 100% | 0d → none |
| 7 | Levantamento de requisitos | 2021-04-12 A | 2021-04-13 A | 0% → 100% | 0d → none |
| 8 | Analise de Tarefas | 2021-04-14 A | 2021-04-14 A | 0% → 100% | 0d → none |
| 9 | Planeamento | 2021-04-15 A | 2021-04-15 A | 0% → 100% | 0d → none |
| 10 | Elaboração de project | 2021-04-16 A | 2021-04-16 A | 0% → 100% | 0d → none |
| 11 | Entrega de project | 2021-04-16 A | 2021-04-16 A | 0% → 100% | 0d → none |
| 12 | **Desenvolvimento** | 2021-04-16 A |  | 0% → 71% | 0d → 6.75d |
| 13 | **Prototipagem** | 2021-04-16 A | 2021-04-30 A | 0% → 100% | 0d → none |
| 14 | Aplicação | 2021-04-16 A | 2021-04-23 A | 0% → 100% | 5d → none |
| 15 | Website | 2021-04-23 A | 2021-04-30 A | 0% → 100% | 0d → none |
| 16 | Selecção e plataformas e software | 2021-04-30 A | 2021-04-30 A | 0% → 100% | 0d → none |
| 17 | **Base de dados** | 2021-05-04 A | 2021-05-14 A | 0% → 100% | 27d → none |
| 18 | Recolha de requisitos | 2021-05-04 A | 2021-05-05 A | 0% → 100% | 27d → none |
| 19 | Elaboração de diagramas | 2021-05-05 A | 2021-05-10 A | 0% → 100% | 27d → none |
| 20 | Planeamento de implementação | 2021-05-10 A | 2021-05-11 A | 0% → 100% | 27d → none |
| 21 | Construção | 2021-05-11 A | 2021-05-14 A | 0% → 100% | 27d → none |
| 22 | **Aplicação** | 2021-04-30 A |  | 0% → 85% | 0d → 6.75d |
| 23 | Analise de prototipo | 2021-04-30 A | 2021-05-03 A | 0% → 100% | 0d → none |
| 24 | Construção | 2021-05-11 A |  | 0% → 85% | 0d → 6.75d |
| 25 | **Website** | 2021-05-03 A |  | 0% → 61% | 0d → 6.75d |
| 26 | Analise de prototipo | 2021-05-03 A | 2021-05-04 A | 0% → 100% | 0d → none |
| 27 | Construção | 2021-05-11 A |  | 0% → 60% | 0d → 6.75d |
| 32 | **Relatório** | 2021-07-05 A |  | 0% → 30% |  |
| 33 | Analise de modelo | 2021-07-05 A | 2021-07-06 A | 0% → 100% | 0d → none |
| 34 | Planeamento | 2021-07-06 A | 2021-07-06 A | 0% → 100% | 0d → none |
| 35 | Elaboração | 2021-07-06 A |  | 0% → 30% |  |
